# Football Pitches Booking

Schedule from MS Project, 2014-01-06 to 2014-04-14.

## Calendars

- Standard: Mon-Sat 08:00-12:00, 13:00-17:00; Sun off.

## Resources

| Resource |
| --- |
| PhuongND |
| GiangNHH |
| ThinhND |
| KhanhNQ |

## Schedule

| ID | WBS | Task | Type | Duration | Start | Finish | Predecessors | Total slack | Free slack | Constraint | Resources | Work |
| --- | --- | --- | --- | --- | --- | --- | --- | --- | --- | --- | --- | --- |
| 1 | 1 | **Preparing** |  | 3d | 2014-01-06 | 2014-01-08 |  | 81d |  |  |  | 96h |
| 2 | 1.1 | Analyze user's requirement |  | 1.5d | 2014-01-06 | 2014-01-07 |  | 69.5d |  | start no earlier than 2014-01-06 | PhuongND; GiangNHH; ThinhND; KhanhNQ | 48h |
| 3 | 1.2 | Review technology |  | 1.5d | 2014-01-07 | 2014-01-08 |  | 68d |  | start no earlier than 2014-01-07 | PhuongND; GiangNHH; ThinhND; KhanhNQ | 48h |
| 4 | 2 | **Project Introduction** |  | 3d | 2014-01-09 | 2014-01-13 |  | 78d |  |  |  | 40h |
| 5 | 2.1 | Research old traditional method and old system |  | 0.5d | 2014-01-09 | 2014-01-09 |  | 67.5d |  | start no earlier than 2014-01-09 | PhuongND; GiangNHH; ThinhND; KhanhNQ | 16h |
| 6 | 2.2 | Prepare Project Introduction document |  | 1d | 2014-01-09 | 2014-01-10 |  | 66d | 0d | start no earlier than 2014-01-09 | ThinhND; KhanhNQ | 16h |
| 7 | 2.3 | Review Project Introduction document |  | 0.5d | 2014-01-10 | 2014-01-10 | 6 | 66d |  | start no earlier than 2014-01-10 | PhuongND; GiangNHH | 8h |
| 8 | 2.4 | Submit Report 1 | milestone | 0d | 2014-01-13 | 2014-01-13 |  | 65d |  | start no earlier than 2014-01-13 |  |  |
| 9 | 3 | **Project Management Plan** |  | 7d | 2014-01-11 | 2014-01-20 |  | 43.5d |  |  |  | 32h |
| 10 | 3.1 | Create task list |  | 1d | 2014-01-11 | 2014-01-11 |  | 29.5d | 0d | start no earlier than 2014-01-11 | PhuongND | 8h |
| 11 | 3.2 | Assign task and scheduling |  | 1.5d | 2014-01-13 | 2014-01-14 | 10 | 29.5d | 0d |  | PhuongND | 12h |
| 12 | 3.3 | Prepare Coding Convention document |  | 1d | 2014-01-11 | 2014-01-11 |  | 31d | 1.5d | start no earlier than 2014-01-11 | GiangNHH | 8h |
| 13 | 3.4 | Create Report 2 |  | 0.5d | 2014-01-14 | 2014-01-14 | 11, 12 | 29.5d | 0d | start no earlier than 2014-01-14 | PhuongND | 4h |
| 14 | 3.5 | Submit Report 2 | milestone | 0d | 2014-01-20 | 2014-01-20 |  | 59d |  | start no earlier than 2014-01-20 |  |  |
| 15 | 4 | **System Requirement Specification** |  | 27d | 2014-01-15 | 2014-02-15 | 13 | 43.5d |  |  |  | 212h |
| 16 | 4.1 | User Requirement Specification |  | 1d | 2014-01-15 | 2014-01-15 |  | 29.5d | 0d | start no earlier than 2014-01-15 | PhuongND; GiangNHH; ThinhND; KhanhNQ | 32h |
| 17 | 4.2 | **System Requirement Specification** |  | 4d | 2014-01-16 | 2014-01-20 | 16 | 43.5d | 0d |  |  | 96h |
| 18 | 4.2.1 | Identify Functional Requirement |  | 1d | 2014-01-16 | 2014-01-16 |  | 29.5d | 0d |  | PhuongND; GiangNHH; ThinhND; KhanhNQ | 32h |
| 19 | 4.2.2 | Create Use Case Diagram |  | 1d | 2014-01-17 | 2014-01-17 | 18 | 29.5d | 0d |  | ThinhND; KhanhNQ | 16h |
| 20 | 4.2.3 | Identify Non-Functional Requirement |  | 1d | 2014-01-17 | 2014-01-17 |  | 29.5d | 0d | start no earlier than 2014-01-17 | GiangNHH; PhuongND | 16h |
| 21 | 4.2.4 | Create the System Requirement Specification |  | 2d | 2014-01-18 | 2014-01-20 | 19, 20 | 29.5d |  | start no earlier than 2014-01-18 | PhuongND; GiangNHH | 32h |
| 22 | 4.3 | Create Entity Relationship Diagram |  | 1d | 2014-01-18 | 2014-01-18 | 19 | 30.5d | 2d | start no earlier than 2014-01-18 | ThinhND; KhanhNQ | 16h |
| 23 | 4.4 | **Review** |  | 3d | 2014-01-20 | 2014-01-22 |  | 42.5d | 0d |  |  | 56h |
| 24 | 4.4.1 | User Requirement Specification |  | 0.5d | 2014-01-20 | 2014-01-20 | 16 | 31d |  | start no earlier than 2014-01-20 | ThinhND; KhanhNQ | 8h |
| 25 | 4.4.2 | System Requirement Specification |  | 1d | 2014-01-21 | 2014-01-21 | 17 | 29.5d |  | start no earlier than 2014-01-20 | PhuongND; GiangNHH; ThinhND; KhanhNQ | 32h |
| 26 | 4.4.3 | Entity Relationship Diagram |  | 1d | 2014-01-22 | 2014-01-22 | 22 | 28.5d |  | start no earlier than 2014-01-22 | PhuongND; GiangNHH | 16h |
| 27 | 4.5 | Create Report 3 |  | 0.5d | 2014-01-23 | 2014-01-23 | 23 | 28.5d | 0.5d | start no earlier than 2014-01-21 | GiangNHH; ThinhND; KhanhNQ | 12h |
| 28 | 4.6 | Submit Report 3 | milestone | 0d | 2014-02-15 | 2014-02-15 |  | 36d |  | start no earlier than 2014-02-15 |  |  |

| ID | WBS | Task | Type | Duration | Start | Finish | Predecessors | Total slack | Free slack | Constraint | Resources | Work |
| --- | --- | --- | --- | --- | --- | --- | --- | --- | --- | --- | --- | --- |
| 29 | 5 | **System Design Description** |  | 29d | 2014-01-24 | 2014-02-27 | 27 | 39d |  |  |  | 332h |
| 30 | 5.1 | Design Overview |  | 0.5d | 2014-01-24 | 2014-01-24 |  | 54.5d |  | start no earlier than 2014-01-24 | PhuongND; GiangNHH; ThinhND; KhanhNQ | 16h |
| 31 | 5.2 | System Architectural Design |  | 0.5d | 2014-01-24 | 2014-01-24 |  | 67d |  | start no earlier than 2014-01-24 | PhuongND; GiangNHH; ThinhND; KhanhNQ | 16h |
| 32 | 5.3 | Component Diagram |  | 1d | 2014-01-25 | 2014-01-25 |  | 50.5d | 11d | start no earlier than 2014-01-25 | PhuongND; GiangNHH; ThinhND; KhanhNQ | 32h |
| 33 | 5.4 | Detailed Description of Components |  | 1.5d | 2014-02-08 | 2014-02-10 | 32 | 39.5d | 1d | start no earlier than 2014-02-08 | PhuongND; GiangNHH; ThinhND; KhanhNQ | 48h |
| 34 | 5.5 | Sequence Diagram |  | 2.5d | 2014-02-10 | 2014-02-12 |  | 37d | 0d | start no earlier than 2014-02-10 | ThinhND; KhanhNQ; PhuongND; GiangNHH | 80h |
| 35 | 5.6 | Diagram Review |  | 1d | 2014-02-13 | 2014-02-13 | 33, 34 | 37d |  | start no earlier than 2014-01-24 | PhuongND; GiangNHH; ThinhND; KhanhNQ | 32h |
| 36 | 5.7 | User Interface Design |  | 2.5d | 2014-02-14 | 2014-02-17 |  | 34.5d |  | start no earlier than 2014-02-14 | GiangNHH; ThinhND; KhanhNQ | 60h |
| 37 | 5.8 | Database Design |  | 2d | 2014-02-14 | 2014-02-15 |  | 35d |  | start no earlier than 2014-02-14 | PhuongND | 16h |
| 38 | 5.9 | Create Report 4 |  | 1d | 2014-02-18 | 2014-02-18 |  | 7d | 0d | start no earlier than 2014-02-18 | PhuongND; GiangNHH; ThinhND; KhanhNQ | 32h |
| 39 | 5.10 | Submit Report 4 | milestone | 0d | 2014-02-27 | 2014-02-27 |  | 26d |  | start no earlier than 2014-02-27 |  |  |
| 40 | 6 | **System Implementation and Testing** |  | 33d | 2014-02-19 | 2014-03-29 | 38 | 13d |  |  |  | 888h |
| 41 | 6.1 | **Prepare** |  | 3d | 2014-02-19 | 2014-02-21 |  | 43d |  |  |  | 88h |
| 42 | 6.1.1 | Implement Database |  | 1d | 2014-02-19 | 2014-02-19 |  | 32d |  |  | ThinhND; KhanhNQ | 16h |
| 43 | 6.1.2 | Define Test Approach |  | 0.5d | 2014-02-19 | 2014-02-19 |  | 32.5d |  | start no earlier than 2014-02-19 | PhuongND; GiangNHH | 8h |
| 44 | 6.1.3 | Create Test Plan |  | 1d | 2014-02-20 | 2014-02-20 |  | 31d |  | start no earlier than 2014-02-20 | PhuongND | 8h |
| 45 | 6.1.4 | Create Test Cases |  | 2d | 2014-02-20 | 2014-02-21 |  | 30d |  | start no earlier than 2014-02-20 | GiangNHH; ThinhND; KhanhNQ | 48h |
| 46 | 6.1.5 | Create Checklists |  | 1d | 2014-02-21 | 2014-02-21 |  | 30d |  | start no earlier than 2014-02-21 | PhuongND | 8h |
| 47 | 6.2 | Coding, Unit Testing and Self-review |  | 18d | 2014-02-22 | 2014-03-14 |  | 4d | 0d | start no earlier than 2014-02-22 | PhuongND; GiangNHH; ThinhND; KhanhNQ | 576h |
| 48 | 6.3 | System Integration and System Testing |  | 6d | 2014-03-15 | 2014-03-21 | 47 | 4d | 0d |  | PhuongND; GiangNHH; ThinhND; KhanhNQ | 192h |
| 49 | 6.4 | Create Report 5 |  | 1d | 2014-03-22 | 2014-03-22 | 48 | 5d |  |  | PhuongND; GiangNHH; ThinhND; KhanhNQ | 32h |
| 50 | 6.5 | Submit Report 5 | milestone | 0d | 2014-03-29 | 2014-03-29 |  | 13d |  | start no earlier than 2014-03-29 |  |  |
| 51 | 7 | **System User's Manual** |  | 18d | 2014-03-24 | 2014-04-14 |  | 0d |  |  |  | 48h |
| 52 | 7.1 | Create Installation Guide |  | 1d | 2014-03-24 | 2014-03-24 |  | 3.5d | 0d | start no earlier than 2014-03-24 | PhuongND; GiangNHH | 16h |
| 53 | 7.2 | Creaet User's Guide |  | 1d | 2014-03-24 | 2014-03-24 |  | 3.5d | 0d | start no earlier than 2014-03-24 | ThinhND; KhanhNQ | 16h |
| 54 | 7.3 | Create Report 6 |  | 0.5d | 2014-03-25 | 2014-03-25 | 52, 53 | 16.5d |  | start no earlier than 2014-03-24 | PhuongND; GiangNHH; ThinhND; KhanhNQ | 16h |
| 55 | 7.4 | Submit Report 6 | milestone | 0d | 2014-04-14 | 2014-04-14 |  | 0d |  | start no earlier than 2014-04-14 |  |  |
